# Cronograma Controle Financeiro Facilitado

Schedule from MS Project, 2018-10-31 to 2019-02-14, costs in R$.

## Calendars

- Standard: Mon-Fri 08:00-12:00, 13:00-17:00; Sat-Sun off.

## Resources

| Resource | Cost per use |
| --- | --- |
| Diogo | 70 |
| Felipe | 70 |
| Gabriel | 70 |
| João | 70 |
| Matheus | 70 |
| Severino | 50 |

## Schedule

| ID | WBS | Task | Duration | Start | Finish | Predecessors | Baseline start | Baseline finish | Baseline duration | Total slack | Free slack | Constraint | Resources | Work | Cost | Baseline cost |
| --- | --- | --- | --- | --- | --- | --- | --- | --- | --- | --- | --- | --- | --- | --- | --- | --- |
| 1 | 1 | **Controle Financeiro Facilitado** | 76.19d | 2018-10-31 | 2019-02-14 |  | 2018-10-31 | 2019-02-28 | 86.5d | 0d |  |  |  | 222h | 6,900 | 6,900 |
| 2 | 1.1 | **Prospecção** | 6.56d | 2018-10-31 | 2018-11-08 |  | 2018-10-31 | 2018-11-08 | 6.31d | 13.6d |  |  |  | 15.5h | 1,080 | 1,080 |
| 3 | 1.1.1 | **Ptec** | 4.12d | 2018-10-31 | 2018-11-06 |  | 2018-10-31 | 2018-11-06 | 4.12d | 13.6d |  |  |  | 9h | 750 | 750 |
| 4 | 1.1.1.1 | Estudar Domínio de Aplicação | 1d | 2018-10-31 | 2018-10-31 |  | 2018-10-31 | 2018-10-31 | 1d | 6.8d | 0d |  | Felipe; Gabriel | 2h | 140 | 140 |
| 5 | 1.1.1.2 | Reunião com o Fornecedor de Requisitos | 1d | 2018-11-01 | 2018-11-01 | 4 | 2018-11-01 | 2018-11-01 | 1d | 6.8d | 0d |  | Diogo; Felipe; Gabriel; João; Matheus | 2h | 350 | 350 |
| 6 | 1.1.1.3 | Redigir PTEC | 1d | 2018-11-02 | 2018-11-02 | 5 | 2018-11-02 | 2018-11-02 | 1d | 6.8d | 0d |  | Felipe; Gabriel | 3.5h | 140 | 140 |
| 7 | 1.1.1.4 | Revisar PTEC | 0.12d | 2018-11-05 | 2018-11-05 | 6 | 2018-11-05 | 2018-11-05 | 0.12d | 6.8d | 0d |  | Matheus | 1h | 70 | 70 |
| 8 | 1.1.1.5 | Aprova PTEC | 1d | 2018-11-05 | 2018-11-06 | 7 | 2018-11-05 | 2018-11-06 | 1d | 6.8d | 0d |  | Severino | 0.5h | 50 | 50 |
| 9 | 1.1.2 | **Est. Prel. Tam** | 1.06d | 2018-11-06 | 2018-11-07 |  | 2018-11-06 | 2018-11-07 | 1.06d | 13.6d |  |  |  | 1.5h | 190 | 190 |
| 10 | 1.1.2.1 | Estimar Tamanho do Projeto | 0.06d | 2018-11-06 | 2018-11-06 | 8 | 2018-11-06 | 2018-11-06 | 0.06d | 6.8d | 0d |  | Felipe; Gabriel | 1h | 140 | 140 |
| 11 | 1.1.2.2 | Revisar Estimativa de Tamanho do Projeto | 1d | 2018-11-06 | 2018-11-07 | 10 | 2018-11-06 | 2018-11-07 | 1d | 6.8d | 0d |  | Severino | 0.5h | 50 | 50 |
| 12 | 1.1.3 | **Est. Prel. Cronograma e Orçamentos** | 1.38d | 2018-11-07 | 2018-11-08 |  | 2018-11-07 | 2018-11-08 | 1.12d | 13.6d |  |  |  | 5h | 140 | 140 |
| 13 | 1.1.3.1 | Elaborar Cronograma e Orçamentos Preliminares | 1.25d | 2018-11-07 | 2018-11-08 | 11 | 2018-11-07 | 2018-11-08 | 1d | 12.54d | 0d |  | Diogo | 4h | 70 | 70 |
| 14 | 1.1.3.2 | Revisão da Elaboração | 0.12d | 2018-11-08 | 2018-11-08 | 13 | 2018-11-08 | 2018-11-08 | 0.12d | 12.54d | 0d |  | João | 1h | 70 | 70 |
| 15 | 1.2 | **Análise** | 9.19d | 2018-11-08 | 2018-11-21 |  | 2018-11-08 | 2018-11-26 | 11.75d | 5.62d |  |  |  | 12h | 750 | 750 |
| 16 | 1.2.1 | **Documento de Requisitos** | 0.88d | 2018-11-08 | 2018-11-09 |  | 2018-11-08 | 2018-11-16 | 5.81d | 13.19d |  |  |  | 6h | 610 | 610 |
| 17 | 1.2.1.1 | Reunião com o Cliente | 0.03d | 2018-11-08 | 2018-11-08 | 14 | 2018-11-08 | 2018-11-08 | 0.2d | 12.54d | 0.41d |  | Diogo; Felipe; Gabriel; João; Matheus | 1h | 350 | 350 |
| 18 | 1.2.1.2 | Elaborar DRE | 0.19d | 2018-11-09 | 2018-11-09 | 17 | 2018-11-14 | 2018-11-14 | 1d | 13.19d | 0d | start no earlier than 2018-11-09 | Felipe; Gabriel | 3h | 140 | 140 |
| 19 | 1.2.1.3 | Revisar DRE | 0.12d | 2018-11-09 | 2018-11-09 | 18 | 2018-11-15 | 2018-11-15 | 1d | 13.19d | 0d |  | Diogo | 1h | 70 | 70 |
| 20 | 1.2.1.4 | Submeter DRE para Aprovação | 0.12d | 2018-11-09 | 2018-11-09 | 19 | 2018-11-16 | 2018-11-16 | 0.12d | 13.19d | 7.56d |  | Severino | 1h | 50 | 50 |
| 21 | 1.2.2 | **MRB** | 0.75d | 2018-11-21 | 2018-11-21 |  | 2018-11-21 | 2018-11-26 | 3.06d | 5.62d |  |  |  | 6h | 140 | 140 |
| 22 | 1.2.2.1 | Elaborar MRB | 0.62d | 2018-11-21 | 2018-11-21 | 20 | 2018-11-21 | 2018-11-22 | 2d | 5.62d | 0d | start no earlier than 2018-11-21 | Diogo | 5h | 70 | 70 |
| 23 | 1.2.2.2 | Revisar MRB | 0.12d | 2018-11-21 | 2018-11-21 | 22 | 2018-11-23 | 2018-11-26 | 1.06d | 5.62d | 2.25d |  | Gabriel | 1h | 70 | 70 |
| 24 | 1.3 | **Planejamento do Projeto** | 5.5d | 2018-11-26 | 2018-12-03 |  | 2018-11-26 | 2018-12-04 | 6.44d | 0d |  |  |  | 11h | 350 | 350 |
| 25 | 1.3.1 | **Diagrama de Classes** | 0.62d | 2018-11-26 | 2018-11-26 |  | 2018-11-26 | 2018-11-29 | 3.5d | 3.38d |  |  |  | 5h | 210 | 210 |
| 26 | 1.3.1.1 | Elaborar Diagrama de Classes | 0.25d | 2018-11-26 | 2018-11-26 | 23 | 2018-11-26 | 2018-11-27 | 1.5d | 3.38d | 0d | start no earlier than 2018-11-26 | Diogo | 2h | 70 | 70 |
| 27 | 1.3.1.2 | Revisar Diagrama de Classes | 0.12d | 2018-11-26 | 2018-11-26 | 26 | 2018-11-27 | 2018-11-28 | 1d | 3.38d | 0d |  | Felipe | 1h | 70 | 70 |
| 28 | 1.3.1.3 | Atualizar MRB | 0.25d | 2018-11-26 | 2018-11-26 | 27 | 2018-11-28 | 2018-11-29 | 1d | 3.38d |  |  | Diogo | 2h | 70 | 70 |

| ID | WBS | Task | Duration | Start | Finish | Predecessors | Baseline start | Baseline finish | Baseline duration | Total slack | Constraint | Resources | Work | Cost | Baseline cost |
| --- | --- | --- | --- | --- | --- | --- | --- | --- | --- | --- | --- | --- | --- | --- | --- |
| 29 | 1.3.2 | **Modelo Entidade de Relacionamento** | 1.5d | 2018-11-30 | 2018-12-03 |  | 2018-11-30 | 2018-12-04 | 2.5d | 0d |  |  | 6h | 140 | 140 |
| 30 | 1.3.2.1 | Elaborar MER | 0.5d | 2018-11-30 | 2018-11-30 | 28 | 2018-11-30 | 2018-12-03 | 1.5d | 0d | start no earlier than 2018-11-30 | Diogo | 4h | 70 | 70 |
| 31 | 1.3.2.2 | Revisar MER | 1d | 2018-11-30 | 2018-12-03 | 30 | 2018-12-03 | 2018-12-04 | 1d | 0d |  | Matheus | 2h | 70 | 70 |
| 32 | 1.4 | **Implementação** | 50.69d | 2018-12-03 | 2019-02-12 |  | 2018-12-04 | 2019-02-26 | 60d | 0d |  |  | 147.5h | 4,200 | 4,200 |
| 33 | 1.4.1 | **[RFC01]Manter Despesas Variáveis** | 0.51d | 2018-12-03 | 2018-12-04 |  | 2018-12-04 | 2018-12-10 | 4d | 0d |  |  | 4.1h | 280 | 280 |
| 34 | 1.4.1.1 | [RFS01]Cadastrar Despesas Variáveis | 0.46d | 2018-12-03 | 2018-12-03 | 31 | 2018-12-04 | 2018-12-05 | 1d | 0d |  | João | 3.7h | 70 | 70 |
| 35 | 1.4.1.2 | [RFS02]Consultar Despesas Variáveis | 0.01d | 2018-12-03 | 2018-12-03 | 34 | 2018-12-05 | 2018-12-06 | 1d | 0d |  | João | 0.1h | 70 | 70 |
| 36 | 1.4.1.3 | [RFS03]Modificar Despesas Variáveis | 0.01d | 2018-12-03 | 2018-12-03 | 35 | 2018-12-06 | 2018-12-07 | 1d | 0d |  | João | 0.1h | 70 | 70 |
| 37 | 1.4.1.4 | [RFS04]Remover Despesas Variáveis | 0.03d | 2018-12-03 | 2018-12-04 | 36 | 2018-12-07 | 2018-12-10 | 1d | 0d |  | João | 0.2h | 70 | 70 |
| 38 | 1.4.2 | Teste RFC01 | 0.05d | 2018-12-04 | 2018-12-04 | 37 | 2018-12-10 | 2018-12-11 | 1d | 0d |  | Matheus | 0.4h | 70 | 70 |
| 39 | 1.4.3 | **[RFC02]Manter Despesas Fixas** | 0.07d | 2018-12-04 | 2018-12-04 |  | 2018-12-11 | 2018-12-17 | 4d | 0d |  |  | 0.6h | 280 | 280 |
| 40 | 1.4.3.1 | [RFS05]Cadastrar Despesas Fixas | 0.03d | 2018-12-04 | 2018-12-04 | 38 | 2018-12-11 | 2018-12-12 | 1d | 0d |  | Matheus | 0.2h | 70 | 70 |
| 41 | 1.4.3.2 | [RFS06]Consultar Despesas Fixas | 0.01d | 2018-12-04 | 2018-12-04 | 40 | 2018-12-12 | 2018-12-13 | 1d | 0d |  | Matheus | 0.1h | 70 | 70 |
| 42 | 1.4.3.3 | [RFS07]Modificar Despesas Fixas | 0.01d | 2018-12-04 | 2018-12-04 | 41 | 2018-12-13 | 2018-12-14 | 1d | 0d |  | Matheus | 0.1h | 70 | 70 |
| 43 | 1.4.3.4 | [RFS08]Remover Despesas Fixas | 0.03d | 2018-12-04 | 2018-12-04 | 42 | 2018-12-14 | 2018-12-17 | 1d | 0d |  | Matheus | 0.2h | 70 | 70 |
| 44 | 1.4.4 | Teste RFC02 | 0.05d | 2018-12-04 | 2018-12-04 | 43 | 2018-12-17 | 2018-12-18 | 1d | 0d |  | João | 0.4h | 70 | 70 |
| 45 | 1.4.5 | **[RFC03]Manter Usuário** | 4d | 2018-12-04 | 2018-12-10 |  | 2018-12-18 | 2018-12-24 | 4d | 0d |  |  | 8h | 280 | 280 |
| 46 | 1.4.5.1 | [RFS09]Cadastrar Usuário | 1d | 2018-12-04 | 2018-12-05 | 44 | 2018-12-18 | 2018-12-19 | 1d | 0d |  | João | 3h | 70 | 70 |
| 47 | 1.4.5.2 | [RFS10]Consultar Usuário | 1d | 2018-12-05 | 2018-12-06 | 46 | 2018-12-19 | 2018-12-20 | 1d | 0d |  | João | 2h | 70 | 70 |
| 48 | 1.4.5.3 | [RFS11]Alterar Usuário | 1d | 2018-12-06 | 2018-12-07 | 47 | 2018-12-20 | 2018-12-21 | 1d | 0d |  | João | 1.5h | 70 | 70 |
| 49 | 1.4.5.4 | [RFS12]Excluir Usuário | 1d | 2018-12-07 | 2018-12-10 | 48 | 2018-12-21 | 2018-12-24 | 1d | 0d |  | João | 1.5h | 70 | 70 |
| 50 | 1.4.6 | Teste RFC03 | 1d | 2018-12-10 | 2018-12-11 | 49 | 2018-12-24 | 2018-12-25 | 1d | 0d |  | Felipe | 1h | 70 | 70 |
| 51 | 1.4.7 | **[RFC04]Manter Autorização de Pagamento** | 4d | 2018-12-11 | 2018-12-17 |  | 2018-12-25 | 2018-12-31 | 4d | 0d |  |  | 8h | 280 | 280 |
| 52 | 1.4.7.1 | [RFS13]Cadastrar Autorização de Pagamento | 1d | 2018-12-11 | 2018-12-12 | 50 | 2018-12-25 | 2018-12-26 | 1d | 0d |  | Matheus | 3h | 70 | 70 |
| 53 | 1.4.7.2 | [RFS14]Consultar Autorização de Pagamento | 1d | 2018-12-12 | 2018-12-13 | 52 | 2018-12-26 | 2018-12-27 | 1d | 0d |  | Matheus | 2h | 70 | 70 |
| 54 | 1.4.7.3 | [RFS15]Alterar Autorização de Pagamento | 1d | 2018-12-13 | 2018-12-14 | 53 | 2018-12-27 | 2018-12-28 | 1d | 0d |  | Matheus | 1.5h | 70 | 70 |
| 55 | 1.4.7.4 | [RFS16]Excluir Autorização de Pagamento | 1d | 2018-12-14 | 2018-12-17 | 54 | 2018-12-28 | 2018-12-31 | 1d | 0d |  | Matheus | 1.5h | 70 | 70 |
| 56 | 1.4.8 | Teste RFC04 | 1d | 2018-12-17 | 2018-12-18 | 55 | 2018-12-31 | 2019-01-01 | 1d | 0d |  | Gabriel | 1h | 70 | 70 |

| ID | WBS | Task | Duration | Start | Finish | Predecessors | Baseline start | Baseline finish | Baseline duration | Total slack | Resources | Work | Cost | Baseline cost |
| --- | --- | --- | --- | --- | --- | --- | --- | --- | --- | --- | --- | --- | --- | --- |
| 57 | 1.4.9 | **[RFC05]Manter Recebimentos** | 4d | 2018-12-18 | 2018-12-24 |  | 2019-01-01 | 2019-01-07 | 4d | 0d |  | 8h | 280 | 280 |
| 58 | 1.4.9.1 | [RFS17]Cadastrar Recebimentos | 1d | 2018-12-18 | 2018-12-19 | 56 | 2019-01-01 | 2019-01-02 | 1d | 0d | João | 3h | 70 | 70 |
| 59 | 1.4.9.2 | [RFS18]Consultar Recebimentos | 1d | 2018-12-19 | 2018-12-20 | 58 | 2019-01-02 | 2019-01-03 | 1d | 0d | João | 2h | 70 | 70 |
| 60 | 1.4.9.3 | [RFS19]Modificar Recebimentos | 1d | 2018-12-20 | 2018-12-21 | 59 | 2019-01-03 | 2019-01-04 | 1d | 0d | João | 1.5h | 70 | 70 |
| 61 | 1.4.9.4 | [RFS20]Deletar Recebimentos | 1d | 2018-12-21 | 2018-12-24 | 60 | 2019-01-04 | 2019-01-07 | 1d | 0d | João | 1.5h | 70 | 70 |
| 62 | 1.4.10 | Teste RFC05 | 1d | 2018-12-24 | 2018-12-25 | 61 | 2019-01-07 | 2019-01-08 | 1d | 0d | Diogo | 1h | 70 | 70 |
| 63 | 1.4.11 | **[RFC06]Manter Conta Bancária** | 4d | 2018-12-25 | 2018-12-31 |  | 2019-01-08 | 2019-01-14 | 4d | 0d |  | 8h | 280 | 280 |
| 64 | 1.4.11.1 | [RFS21]Cadastrar Conta Bancária | 1d | 2018-12-25 | 2018-12-26 | 62 | 2019-01-08 | 2019-01-09 | 1d | 0d | Matheus | 3h | 70 | 70 |
| 65 | 1.4.11.2 | [RFS22]Consultar Conta Bancária | 1d | 2018-12-26 | 2018-12-27 | 64 | 2019-01-09 | 2019-01-10 | 1d | 0d | Matheus | 2h | 70 | 70 |
| 66 | 1.4.11.3 | [RFS23]Alterar Conta Bancária | 1d | 2018-12-27 | 2018-12-28 | 65 | 2019-01-10 | 2019-01-11 | 1d | 0d | Matheus | 1.5h | 70 | 70 |
| 67 | 1.4.11.4 | [RFS24]Excluir conta Bancária | 1d | 2018-12-28 | 2018-12-31 | 66 | 2019-01-11 | 2019-01-14 | 1d | 0d | Matheus | 1.5h | 70 | 70 |
| 68 | 1.4.12 | Teste RFC06 | 1d | 2018-12-31 | 2019-01-01 | 67 | 2019-01-14 | 2019-01-15 | 1d | 0d | João | 1h | 70 | 70 |
| 69 | 1.4.13 | **[RFC07]Manter Cliente** | 4d | 2019-01-01 | 2019-01-07 |  | 2019-01-15 | 2019-01-21 | 4d | 0d |  | 8h | 280 | 280 |
| 70 | 1.4.13.1 | [RFS25]Cadastrar Cliente | 1d | 2019-01-01 | 2019-01-02 | 68 | 2019-01-15 | 2019-01-16 | 1d | 0d | João | 3h | 70 | 70 |
| 71 | 1.4.13.2 | [RFS26]Consultar Cliente | 1d | 2019-01-02 | 2019-01-03 | 70 | 2019-01-16 | 2019-01-17 | 1d | 0d | João | 2h | 70 | 70 |
| 72 | 1.4.13.3 | [RFS27]Alterar Cliente | 1d | 2019-01-03 | 2019-01-04 | 71 | 2019-01-17 | 2019-01-18 | 1d | 0d | João | 1.5h | 70 | 70 |
| 73 | 1.4.13.4 | [RFS28]Excluir Cliente | 1d | 2019-01-04 | 2019-01-07 | 72 | 2019-01-18 | 2019-01-21 | 1d | 0d | João | 1.5h | 70 | 70 |
| 74 | 1.4.14 | Teste RFC07 | 1d | 2019-01-07 | 2019-01-08 | 73 | 2019-01-21 | 2019-01-22 | 1d | 0d | Matheus | 1h | 70 | 70 |
| 75 | 1.4.15 | **[RFC08]Manter Cartão de Crédito** | 4d | 2019-01-08 | 2019-01-14 |  | 2019-01-22 | 2019-01-28 | 4d | 0d |  | 8h | 280 | 280 |
| 76 | 1.4.15.1 | [RFS29]Cadastrar Cartão de Crédito | 1d | 2019-01-08 | 2019-01-09 | 74 | 2019-01-22 | 2019-01-23 | 1d | 0d | Matheus | 3h | 70 | 70 |
| 77 | 1.4.15.2 | [RFS30]Consultar Cartão de Crédito | 1d | 2019-01-09 | 2019-01-10 | 76 | 2019-01-23 | 2019-01-24 | 1d | 0d | Matheus | 2h | 70 | 70 |
| 78 | 1.4.15.3 | [RFS31]Alterar Cartão de Crédito | 1d | 2019-01-10 | 2019-01-11 | 77 | 2019-01-24 | 2019-01-25 | 1d | 0d | Matheus | 1.5h | 70 | 70 |
| 79 | 1.4.15.4 | [RFS32]Excluir Cartão de Crédito | 1d | 2019-01-11 | 2019-01-14 | 78 | 2019-01-25 | 2019-01-28 | 1d | 0d | Matheus | 1.5h | 70 | 70 |
| 80 | 1.4.16 | Teste RFC08 | 1d | 2019-01-14 | 2019-01-15 | 79 | 2019-01-28 | 2019-01-29 | 1d | 0d | João | 1h | 70 | 70 |

| ID | WBS | Task | Duration | Start | Finish | Predecessors | Baseline start | Baseline finish | Baseline duration | Total slack | Resources | Work | Cost | Baseline cost |
| --- | --- | --- | --- | --- | --- | --- | --- | --- | --- | --- | --- | --- | --- | --- |
| 81 | 1.4.17 | **[RFS33]Emitir Relatóriode Despesas** | 2d | 2019-01-15 | 2019-01-17 |  | 2019-01-29 | 2019-01-31 | 2d | 0d |  | 8.5h | 140 | 140 |
| 82 | 1.4.17.1 | [RFS33]Emitir Relatóriode Despesas | 1d | 2019-01-15 | 2019-01-16 | 80 | 2019-01-29 | 2019-01-30 | 1d | 0d | João | 7h | 70 | 70 |
| 83 | 1.4.17.2 | Teste RFS33 | 1d | 2019-01-16 | 2019-01-17 | 82 | 2019-01-30 | 2019-01-31 | 1d | 0d | Gabriel | 1.5h | 70 | 70 |
| 84 | 1.4.18 | **[RFS34]Emitir Relatório de Receita** | 2d | 2019-01-17 | 2019-01-21 |  | 2019-01-31 | 2019-02-04 | 2d | 0d |  | 8.5h | 140 | 140 |
| 85 | 1.4.18.1 | [RFS34]Emitir Relatório de Receita | 1d | 2019-01-17 | 2019-01-18 | 83 | 2019-01-31 | 2019-02-01 | 1d | 0d | Matheus | 7h | 70 | 70 |
| 86 | 1.4.18.2 | Teste RFS34 | 1d | 2019-01-18 | 2019-01-21 | 85 | 2019-02-01 | 2019-02-04 | 1d | 0d | Felipe | 1.5h | 70 | 70 |
| 87 | 1.4.19 | **[RNF01]Interface de Sistema** | 2d | 2019-01-21 | 2019-01-23 |  | 2019-02-04 | 2019-02-06 | 2d | 0d |  | 9h | 140 | 140 |
| 88 | 1.4.19.1 | [RNF01]Interface de Sistema | 1d | 2019-01-21 | 2019-01-22 | 86 | 2019-02-04 | 2019-02-05 | 1d | 0d | João | 8h | 70 | 70 |
| 89 | 1.4.19.2 | Teste RNF01 | 1d | 2019-01-22 | 2019-01-23 | 88 | 2019-02-05 | 2019-02-06 | 1d | 0d | Diogo | 1h | 70 | 70 |
| 90 | 1.4.20 | **[RNF02]Sistema e Plataforma** | 2d | 2019-01-23 | 2019-01-25 |  | 2019-02-06 | 2019-02-08 | 2d | 0d |  | 9h | 140 | 140 |
| 91 | 1.4.20.1 | [RNF02]Sistema e Plataforma | 1d | 2019-01-23 | 2019-01-24 | 89 | 2019-02-06 | 2019-02-07 | 1d | 0d | Matheus | 8h | 70 | 70 |
| 92 | 1.4.20.2 | Teste RNF02 | 1d | 2019-01-24 | 2019-01-25 | 91 | 2019-02-07 | 2019-02-08 | 1d | 0d | João | 1h | 70 | 70 |
| 93 | 1.4.21 | **[RNF03]Sistema Otimizado** | 2d | 2019-01-25 | 2019-01-29 |  | 2019-02-08 | 2019-02-12 | 2d | 0d |  | 9h | 140 | 140 |
| 94 | 1.4.21.1 | [RNF03]Sistema Otimizado | 1d | 2019-01-25 | 2019-01-28 | 92 | 2019-02-08 | 2019-02-11 | 1d | 0d | João | 7h | 70 | 70 |
| 95 | 1.4.21.2 | Teste RNF03 | 1d | 2019-01-28 | 2019-01-29 | 94 | 2019-02-11 | 2019-02-12 | 1d | 0d | Matheus | 2h | 70 | 70 |
| 96 | 1.4.22 | **[RNF04]Segurança e Criptografia** | 2d | 2019-01-29 | 2019-01-31 |  | 2019-02-12 | 2019-02-14 | 2d | 0d |  | 9h | 140 | 140 |
| 97 | 1.4.22.1 | [RNF04]Segurança e Criptografia | 1d | 2019-01-29 | 2019-01-30 | 95 | 2019-02-12 | 2019-02-13 | 1d | 0d | Matheus | 8h | 70 | 70 |
| 98 | 1.4.22.2 | Teste RNF04 | 1d | 2019-01-30 | 2019-01-31 | 97 | 2019-02-13 | 2019-02-14 | 1d | 0d | Diogo | 1h | 70 | 70 |
| 99 | 1.4.23 | **[RNF05]Número Mínimo de Caracteres para Senha** | 2d | 2019-01-31 | 2019-02-04 |  | 2019-02-14 | 2019-02-18 | 2d | 0d |  | 8h | 140 | 140 |
| 100 | 1.4.23.1 | [RNF05]Número Mínimo de Caracteres para Senha | 1d | 2019-01-31 | 2019-02-01 | 98 | 2019-02-14 | 2019-02-15 | 1d | 0d | João | 7h | 70 | 70 |
| 101 | 1.4.23.2 | Teste RNF05 | 1d | 2019-02-01 | 2019-02-04 | 100 | 2019-02-15 | 2019-02-18 | 1d | 0d | Gabriel | 1h | 70 | 70 |
| 102 | 1.4.24 | **[RNF06]Limite de Tentativas de Login** | 2d | 2019-02-04 | 2019-02-06 |  | 2019-02-18 | 2019-02-20 | 2d | 0d |  | 9h | 140 | 140 |
| 103 | 1.4.24.1 | [RNF06]Limite de Tentativas de Login | 1d | 2019-02-04 | 2019-02-05 | 101 | 2019-02-18 | 2019-02-19 | 1d | 0d | Matheus | 8h | 70 | 70 |
| 104 | 1.4.24.2 | Teste RNF06 | 1d | 2019-02-05 | 2019-02-06 | 103 | 2019-02-19 | 2019-02-20 | 1d | 0d | Felipe | 1h | 70 | 70 |

| ID | WBS | Task | Duration | Start | Finish | Predecessors | Baseline start | Baseline finish | Baseline duration | Total slack | Resources | Work | Cost | Baseline cost |
| --- | --- | --- | --- | --- | --- | --- | --- | --- | --- | --- | --- | --- | --- | --- |
| 105 | 1.4.25 | **[RNF07]Logoff Automático** | 2d | 2019-02-06 | 2019-02-08 |  | 2019-02-20 | 2019-02-22 | 2d | 0d |  | 9h | 140 | 140 |
| 106 | 1.4.25.1 | [RNF07]Logoff Automático | 1d | 2019-02-06 | 2019-02-07 | 104 | 2019-02-20 | 2019-02-21 | 1d | 0d | João | 8h | 70 | 70 |
| 107 | 1.4.25.2 | Teste RNF07 | 1d | 2019-02-07 | 2019-02-08 | 106 | 2019-02-21 | 2019-02-22 | 1d | 0d | Diogo | 1h | 70 | 70 |
| 108 | 1.4.26 | **[RNF08]Logs de Usuários** | 2d | 2019-02-08 | 2019-02-12 |  | 2019-02-22 | 2019-02-26 | 2d | 0d |  | 9h | 140 | 140 |
| 109 | 1.4.26.1 | [RNF08]Logs de Usuários | 1d | 2019-02-08 | 2019-02-11 | 107 | 2019-02-22 | 2019-02-25 | 1d | 0d | Matheus | 8h | 70 | 70 |
| 110 | 1.4.26.2 | Teste RNF08 | 1d | 2019-02-11 | 2019-02-12 | 109 | 2019-02-25 | 2019-02-26 | 1d | 0d | Gabriel | 1h | 70 | 70 |
| 111 | 1.5 | **Monitoramento e Controle** | 52.69d | 2018-12-03 | 2019-02-14 |  | 2018-12-04 | 2019-02-28 | 62d | 0d |  | 36h | 520 | 520 |
| 112 | 1.5.1 | Acompanhar Projeto | 1d | 2018-12-03 | 2018-12-04 | 31 | 2018-12-04 | 2018-12-05 | 1d | 61d | Severino | 6.5h | 50 | 50 |
| 113 | 1.5.2 | **Gerência de Configuração** | 2d | 2019-02-12 | 2019-02-14 |  | 2019-02-26 | 2019-02-28 | 2d | 0d |  | 29.5h | 470 | 470 |
| 114 | 1.5.2.1 | Elaborar Branch | 1d | 2019-02-12 | 2019-02-13 | 110 | 2019-02-26 | 2019-02-27 | 1d | 0d | Diogo; Felipe; Gabriel; João; Matheus; Severino | 29h | 400 | 400 |
| 115 | 1.5.2.2 | Realizar Merge da Branch para a Trunk | 1d | 2019-02-13 | 2019-02-14 | 114 | 2019-02-27 | 2019-02-28 | 1d | 0d | Diogo | 0.5h | 70 | 70 |
